# Gantt-SFL5-final_1ere_partie

Schedule from MS Project, 2019-01-07 to 2019-05-17, A marks actual dates.

## Calendars

- Standard: Mon-Fri 09:00-12:00, 14:00-18:00; Sat-Sun off. Exceptions (off unless hours are given): 2019-02-08 to 2019-02-24 (Vacances de Février), 2019-04-06 to 2019-04-23 (Vacances de Pâques).

## Resources

| Resource |
| --- |
| ID-1 Killian Labattut |
| ID-2 Lucas Minaud |
| ID-3 Valentin Chevallier |
| ID-4 Audran Raynal |
| Tout le Crew |

## Schedule

| ID | WBS | Task | Type | Duration | Start | Finish | Predecessors | Complete | Remaining | Total slack | Constraint | Resources | Work | Actual work |
| --- | --- | --- | --- | --- | --- | --- | --- | --- | --- | --- | --- | --- | --- | --- |
| 1 | 1 | **Projet SFL5** |  | 63d? | 2019-01-07 A | 2019-05-17 |  | 46% | 34.25d? | 0d |  |  | 835.04h | 430.31h |
| 2 | 1.1 | **Phase 1** |  | 14.81d | 2019-01-07 A | 2019-01-29 A |  | 100% |  |  |  |  | 368.08h | 368.08h |
| 3 | 1.1.1 | **Documentation** |  | 13.94d | 2019-01-07 A | 2019-01-28 A |  | 100% |  |  |  |  | 186.06h | 186.06h |
| 4 | 1.1.1.1 | Analyse du cahier des charges | manual | 3.44d | 2019-01-07 A | 2019-01-10 A |  | 100% |  |  |  | Tout le Crew | 27.5h | 27.5h |
| 5 | 1.1.1.2 | Rédaction d'une mind-map de projet | manual | 0.88d | 2019-01-11 A | 2019-01-11 A | 4 | 100% |  |  |  | ID-3 Valentin Chevallier | 7.04h | 7.04h |
| 6 | 1.1.1.3 | Début de la redaction du dossier commun | manual | 5.19d | 2019-01-11 A | 2019-01-18 A | 4 | 100% |  |  |  | ID-1 Killian Labattut | 41.52h | 41.52h |
| 7 | 1.1.1.4 | Réalisation Diagramme de classe : partie interface web | manual | 2.56d | 2019-01-14 A | 2019-01-16 A | 5 | 100% |  |  |  | ID-3 Valentin Chevallier | 20.5h | 20.5h |
| 8 | 1.1.1.5 | Réalisation Diagramme de cas d'utilisation : partie interface web | manual | 2.69d | 2019-01-17 A | 2019-01-21 A | 7 | 100% |  |  | start no earlier than 2019-01-17 | ID-3 Valentin Chevallier | 21.5h | 21.5h |
| 9 | 1.1.1.6 | Réalisation Diagramme de classe : partie Centrale Raspberry | manual | 1.69d | 2019-01-22 A | 2019-01-23 A | 6 | 100% |  |  |  | ID-1 Killian Labattut; ID-4 Audran Raynal | 27h | 27h |
| 10 | 1.1.1.7 | Réalisation Diagramme de séquence : partie Centrale Rasberry | manual | 1.69d | 2019-01-25 A | 2019-01-28 A | 9 | 100% |  |  |  | ID-1 Killian Labattut | 13.5h | 13.5h |
| 11 | 1.1.1.8 | Création modèle relationel de base de données | manual | 3.44d | 2019-01-22 A | 2019-01-25 A | 8 | 100% |  |  |  | ID-3 Valentin Chevallier | 27.5h | 27.5h |
| 12 | 1.1.2 | **Choix capteurs** |  | 11.31d | 2019-01-11 A | 2019-01-29 A | 4 | 100% |  |  |  | ID-2 Lucas Minaud | 182.02h | 182.02h |
| 13 | 1.1.2.1 | Intensité Lumineuse | manual | 4.44d | 2019-01-11 A | 2019-01-17 A |  | 100% |  |  |  | ID-2 Lucas Minaud | 35.52h | 35.52h |
| 14 | 1.1.2.2 | Hygrométrie | manual | 3.56d | 2019-01-18 A | 2019-01-24 A | 13 | 100% |  |  |  | ID-2 Lucas Minaud | 28.5h | 28.5h |
| 15 | 1.1.2.3 | Rapport sur les capteurs choisis | manual | 3.44d | 2019-01-24 A | 2019-01-29 A | 14 | 100% |  |  |  | ID-2 Lucas Minaud | 27.5h | 27.5h |
| 16 | 1.2 | **Phase 2** |  | 48.19d? | 2019-01-29 A | 2019-05-17 | 2 | 31% | 33.27d? | 0d |  |  | 466.96h | 62.23h |
| 17 | 1.2.1 | **Mise en place des capteurs** |  | 43.69d | 2019-01-30 A | 2019-05-10 |  | 13% | 37.84d | 0d |  |  | 466.96h | 62.23h |
| 18 | 1.2.1.1 | **Etudiant 1** |  | 13.94d | 2019-04-03 A | 2019-05-10 | 2 | 50% | 6.97d | 0d |  | ID-1 Killian Labattut | 111.5h | 55.75h |
| 19 | 1.2.1.1.1 | Anémomètrie et Girouette | manual | 14.06d | 2019-04-03 A | 2019-05-10 |  | 50% | 7.03d |  |  |  |  |  |
| 20 | 1.2.1.2 | **Etudiant 2** |  | 14.87d | 2019-01-30 A | 2019-03-08 | 2 | 5% | 14.06d | 0d |  | ID-2 Lucas Minaud | 118.98h | 6.48h |
| 21 | 1.2.1.2.1 | Capteur d'intensité lumineuse | manual | 6.06d | 2019-01-30 A | 2019-02-07 |  | 13% | 5.25d |  |  |  |  |  |
| 22 | 1.2.1.2.2 | Capteur Hygromètrique | manual | 8.81d | 2019-02-07 | 2019-03-08 | 21 |  |  |  |  |  |  |  |
| 23 | 1.2.1.3 | **Etudiant 3** |  | 14.75d | 2019-01-30 | 2019-03-08 | 2 |  |  | 0d |  | ID-3 Valentin Chevallier | 117.98h |  |
| 24 | 1.2.1.3.1 | Capteurs Températures Serre | manual | 6.06d | 2019-01-30 | 2019-02-07 |  |  |  |  |  |  |  |  |
| 25 | 1.2.1.3.2 | Capteur Temperature Eau | manual | 8.69d | 2019-02-07 | 2019-03-08 | 24 |  |  |  | finish no earlier than 2019-03-07 |  |  |  |

| ID | WBS | Task | Type | Duration | Start | Finish | Predecessors | Complete | Remaining | Total slack | Resources | Work |
| --- | --- | --- | --- | --- | --- | --- | --- | --- | --- | --- | --- | --- |
| 26 | 1.2.1.4 | **Etudiant 4** |  | 14.81d | 2019-01-30 | 2019-03-08 | 2 |  |  | 0d | ID-4 Audran Raynal | 118.5h |
| 27 | 1.2.1.4.1 | Capteurs de pluviométrie | manual | 14.94d | 2019-01-30 | 2019-03-08 |  |  |  |  |  |  |
| 28 | 1.2.2 | **Réalisation** |  | 48.12d | 2019-01-30 A | 2019-05-17 |  | 49% | 24.46d | 0d |  |  |
| 29 | 1.2.2.1 | Réalisation Carte de gestion | manual | 30d | 2019-01-30 A | 2019-04-03 A |  | 100% |  |  |  |  |
| 30 | 1.2.2.2 | Intégration des capteurs | manual | 1d | 2019-05-17 A | 2019-05-17 |  |  | 1d |  |  |  |
| 31 | 1.2.2.3 | Réalisation Application Android | manual | 30d | 2019-03-11 | 2019-05-14 |  |  |  |  |  |  |
| 32 | 1.2.3 | **Phase 3** |  | 0.88d? | 2019-01-29 | 2019-01-30 |  |  |  | 0d |  |  |
| 33 | 1.2.3.1 | Sciences physiques | manual | 0.88d? | 2019-01-29 | 2019-01-30 |  |  |  |  |  |  |
| 34 | 1.2.3.2 | Etalonnage | manual | 0.88d? | 2019-01-29 | 2019-01-30 |  |  |  |  |  |  |
| 35 | 1.2.3.3 | Date de rendu du projet | manual | 0.88d? | 2019-01-29 | 2019-01-30 |  |  |  |  |  |  |
